# TU Instinctive

Schedule from GanttProject, 2018-01-15 to 2020-02-04, baseline: overlaping regardless of resources.

## Calendars

- Project calendar: Mon-Fri working; Sat-Sun off.

## Schedule

| ID | WBS | Task | Type | Duration | Start | Finish | Predecessors | Baseline start | Baseline finish | Baseline duration |
| --- | --- | --- | --- | --- | --- | --- | --- | --- | --- | --- |
| 1 | 1 | Start project | milestone | 0d | 2018-01-15 | 2018-01-15 |  | 2014-01-15 | 2014-01-15 | 0d |
| 2 | 2 | **TU Instinctive** |  | 536d | 2018-01-15 | 2020-02-03 |  |  |  |  |
| 3 | 2.1 | **Preliminary development** |  | 51d | 2018-01-15 | 2018-03-26 | 1 | 2014-01-15 | 2014-03-13 | 42d |
| 4 | 2.1.1 | Version 1.0 bugs |  | 15d | 2018-01-15 | 2018-02-02 |  | 2014-01-15 | 2014-02-04 | 15d |
| 5 | 2.1.2 | Version 1.0 improvements |  | 14d | 2018-02-05 | 2018-02-22 | 4 | 2014-02-05 | 2014-02-24 | 14d |
| 6 | 2.1.3 | Version 1.0 Fixes | milestone | 0d | 2018-02-23 | 2018-02-23 | 4, 5 | 2014-02-25 | 2014-02-25 | 0d |
| 7 | 2.1.4 | Refactor to get rid of KBAdapter addressing |  | 2d | 2018-02-23 | 2018-02-26 | 6 | 2014-02-25 | 2014-02-26 | 2d |
| 8 | 2.1.5 | Test and debug |  | 2d | 2018-02-27 | 2018-02-28 | 7 | 2014-02-25 | 2014-02-25 | 0d |
| 9 | 2.1.6 | Refactor model |  | 10d | 2018-03-01 | 2018-03-14 | 8 |  |  |  |
| 10 | 2.1.7 | Test and debug |  | 3d | 2018-03-15 | 2018-03-19 | 9 | 2014-03-11 | 2014-03-13 | 3d |
| 11 | 2.1.8 | HowTo training |  | 2d | 2018-03-20 | 2018-03-21 | 10 | 2014-02-25 | 2014-02-26 | 2d |
| 12 | 2.1.9 | Test and debug |  | 3d | 2018-03-22 | 2018-03-26 | 11 | 2014-02-27 | 2014-03-03 | 3d |
| 13 | 2.2 | **Thinking model** |  | 79d | 2018-03-27 | 2018-07-13 | 3 | 2014-03-14 | 2014-06-04 | 59d |
| 14 | 2.2.1 | 6 thinking levels design |  | 5d | 2018-03-27 | 2018-04-02 |  | 2014-03-14 | 2014-03-20 | 5d |
| 15 | 2.2.2 | 6 thinking levels implementation |  | 10d | 2018-04-03 | 2018-04-16 | 14 | 2014-03-21 | 2014-04-03 | 10d |
| 16 | 2.2.3 | Test and debug |  | 10d | 2018-04-17 | 2018-04-30 | 15 | 2014-04-04 | 2014-04-17 | 10d |
| 17 | 2.2.4 | Integration |  | 10d | 2018-05-01 | 2018-05-14 | 16 | 2014-04-18 | 2014-05-01 | 10d |
| 18 | 2.2.5 | Time concept |  | 3d | 2018-05-15 | 2018-05-17 | 17 | 2014-05-02 | 2014-05-06 | 3d |
| 19 | 2.2.6 | Personality manager |  | 10d | 2018-05-18 | 2018-05-31 | 18 | 2014-04-18 | 2014-05-01 | 10d |
| 20 | 2.2.7 | Test and debug |  | 10d | 2018-06-01 | 2018-06-14 | 19 | 2014-05-02 | 2014-05-15 | 10d |
| 21 | 2.2.8 | Instinctive level |  | 3d | 2018-06-15 | 2018-06-19 | 20 | 2014-05-07 | 2014-05-09 | 3d |
| 22 | 2.2.9 | Test and debug |  | 1d | 2018-06-20 | 2018-06-20 | 21 | 2014-05-12 | 2014-05-12 | 1d |
| 23 | 2.2.10 | Integration |  | 7d | 2018-06-21 | 2018-06-29 | 22 | 2014-05-13 | 2014-05-21 | 7d |
| 24 | 2.2.11 | Test and debug |  | 10d | 2018-07-02 | 2018-07-13 | 23 | 2014-05-22 | 2014-06-04 | 10d |
| 25 | 2.2.12 | Thinking model end | milestone | 0d | 2018-07-16 | 2018-07-16 | 24 | 2014-06-05 | 2014-06-05 | 0d |

| ID | WBS | Task | Type | Duration | Start | Finish | Predecessors | Baseline start | Baseline finish | Baseline duration |
| --- | --- | --- | --- | --- | --- | --- | --- | --- | --- | --- |
| 26 | 2.3 | **Analyser** |  | 92d | 2018-07-16 | 2018-11-20 | 13 | 2014-06-05 | 2014-08-15 | 52d |
| 27 | 2.3.1 | JNI PLN |  | 15d | 2018-07-16 | 2018-08-03 |  | 2014-06-05 | 2014-06-25 | 15d |
| 28 | 2.3.2 | Test and debug |  | 15d | 2018-08-06 | 2018-08-24 | 27 | 2014-06-26 | 2014-07-16 | 15d |
| 29 | 2.3.3 | Inductive reasoning |  | 7d | 2018-08-27 | 2018-09-04 | 28 | 2014-07-17 | 2014-07-25 | 7d |
| 30 | 2.3.4 | Test and debug |  | 3d | 2018-09-05 | 2018-09-07 | 29 | 2014-07-28 | 2014-07-30 | 3d |
| 31 | 2.3.5 | Deductive reasoning |  | 6d | 2018-09-10 | 2018-09-17 | 30 | 2014-07-17 | 2014-07-24 | 6d |
| 32 | 2.3.6 | Test and bebug |  | 3d | 2018-09-18 | 2018-09-20 | 31 | 2014-07-25 | 2014-07-29 | 3d |
| 33 | 2.3.7 | Abductive reasoning |  | 8d | 2018-09-21 | 2018-10-02 | 32 | 2014-07-17 | 2014-07-28 | 8d |
| 34 | 2.3.8 | Test and debug |  | 4d | 2018-10-03 | 2018-10-08 | 33 | 2014-07-29 | 2014-08-01 | 4d |
| 35 | 2.3.9 | Integration |  | 7d | 2018-10-09 | 2018-10-17 | 34 | 2014-08-04 | 2014-08-12 | 7d |
| 36 | 2.3.10 | Knowledge to rules inferer design |  | 4d | 2018-10-18 | 2018-10-23 | 35 |  |  |  |
| 37 | 2.3.11 | Knowledge to logical rules Inferer |  | 7d | 2018-10-24 | 2018-11-01 | 36 |  |  |  |
| 38 | 2.3.12 | Test and debug |  | 7d | 2018-11-02 | 2018-11-12 | 37 |  |  |  |
| 39 | 2.3.13 | Integration |  | 3d | 2018-11-13 | 2018-11-15 | 38 |  |  |  |
| 40 | 2.3.14 | Testing |  | 3d | 2018-11-16 | 2018-11-20 | 35, 39 | 2014-08-13 | 2014-08-15 | 3d |
| 41 | 2.3.15 | Analyser end | milestone | 0d | 2018-11-21 | 2018-11-21 | 40 | 2014-08-18 | 2014-08-18 | 0d |
| 42 | 2.4 | **Actuator** |  | 77d | 2018-11-21 | 2019-03-07 | 26 | 2014-08-18 | 2014-11-19 | 68d |
| 43 | 2.4.1 | Smart actuator |  | 10d | 2018-11-21 | 2018-12-04 | 10 | 2014-08-18 | 2014-08-18 | 1d |
| 44 | 2.4.2 | Test and debug |  | 10d | 2018-12-05 | 2018-12-18 | 43 | 2014-08-19 | 2014-09-01 | 10d |
| 45 | 2.4.3 | Smart feedback analyser |  | 15d | 2018-12-19 | 2019-01-08 | 44 | 2014-09-02 | 2014-09-22 | 15d |
| 46 | 2.4.4 | Test and debug |  | 7d | 2019-01-09 | 2019-01-17 | 45 | 2014-09-23 | 2014-10-01 | 7d |
| 47 | 2.4.5 | Smart reporter |  | 10d | 2019-01-18 | 2019-01-31 | 46 | 2014-10-02 | 2014-10-15 | 10d |
| 48 | 2.4.6 | Test and debug |  | 10d | 2019-02-01 | 2019-02-14 | 47 | 2014-10-16 | 2014-10-29 | 10d |
| 49 | 2.4.7 | Testing |  | 15d | 2019-02-15 | 2019-03-07 | 48 | 2014-10-30 | 2014-11-19 | 15d |
| 50 | 2.4.8 | Smart actuator end | milestone | 0d | 2019-03-08 | 2019-03-08 | 49 | 2014-11-20 | 2014-11-20 | 0d |

| ID | WBS | Task | Type | Duration | Start | Finish | Predecessors | Baseline start | Baseline finish | Baseline duration |
| --- | --- | --- | --- | --- | --- | --- | --- | --- | --- | --- |
| 51 | 2.5 | **Emotional thinking** |  | 110d | 2019-03-08 | 2019-08-08 | 42 | 2014-11-20 | 2015-04-22 | 110d |
| 52 | 2.5.1 | Apprisal theory analysis |  | 10d | 2019-03-08 | 2019-03-21 |  | 2014-11-20 | 2014-12-03 | 10d |
| 53 | 2.5.2 | Design |  | 20d | 2019-03-22 | 2019-04-18 | 52 | 2014-12-04 | 2014-12-31 | 20d |
| 54 | 2.5.3 | Implementation and testing |  | 80d | 2019-04-19 | 2019-08-08 | 53 | 2015-01-01 | 2015-04-22 | 80d |
| 55 | 2.6 | **Common sense reasoning** |  | 75d | 2019-08-09 | 2019-11-21 | 51 | 2015-04-23 | 2015-08-05 | 75d |
| 56 | 2.6.1 | Design |  | 15d | 2019-08-09 | 2019-08-29 |  | 2015-04-23 | 2015-05-13 | 15d |
| 57 | 2.6.2 | Implementation and testing |  | 60d | 2019-08-30 | 2019-11-21 | 56 | 2015-05-14 | 2015-08-05 | 60d |
| 58 | 2.7 | **Time control extension** |  | 32d | 2019-11-22 | 2020-01-06 | 55 |  |  |  |
| 59 | 2.7.1 | Design time control critic |  | 2d | 2019-11-22 | 2019-11-25 |  |  |  |  |
| 60 | 2.7.2 | Implement time control |  | 15d | 2019-11-26 | 2019-12-16 | 59 |  |  |  |
| 61 | 2.7.3 | Test and debug |  | 15d | 2019-12-17 | 2020-01-06 | 60 |  |  |  |
| 62 | 2.8 | Knowledge base creation and training |  | 20d | 2020-01-07 | 2020-02-03 | 55, 58 | 2015-08-06 | 2015-09-02 | 20d |
| 63 | 2.9 | TU Instinctive project end | milestone | 0d | 2020-02-04 | 2020-02-04 | 62 | 2015-09-03 | 2015-09-03 | 0d |
