# Menta 0.3 research

Schedule from GanttProject, 2012-01-16 to 2012-09-05.
Research project to automate the incident handling.

## Calendars

- Project calendar: Mon-Fri working; Sat-Sun off.

## Resources

| Resource | Group |
| --- | --- |
| Max | Architect |
| Alex | Team lead |
| Adel | Developer |
| Bulat | Developer |
| Renat | Developer |
| Artem | Developer |

## Schedule

| ID | WBS | Task | Type | Duration | Start | Finish | Predecessors | Resources |
| --- | --- | --- | --- | --- | --- | --- | --- | --- |
| 1 | 1 | **Analysis** |  | 11d | 2012-01-16 | 2012-01-30 |  |  |
| 2 | 1.1 | Incidents |  | 5d | 2012-01-16 | 2012-01-20 |  | Renat; Alex [50%]; Artem; Adel [50%]; Bulat |
| 3 | 1.2 | Workbook articles |  | 6d | 2012-01-23 | 2012-01-30 | 2 | Renat; Alex; Artem; Adel; Bulat |
| 4 | 2 | **Design Emotion Machine** |  | 38d | 2012-01-23 | 2012-03-14 |  |  |
| 5 | 2.1 | Inbound textual description |  | 1d | 2012-01-23 | 2012-01-23 |  | Alex |
| 6 | 2.2 | Internal knowledge(atom) representations |  | 8d | 2012-01-23 | 2012-02-01 |  | Max |
| 7 | 2.3 | Formalization outbound structures |  | 6d | 2012-02-02 | 2012-02-09 | 6 | Max |
| 8 | 2.4 | Design Solution HowTo-s |  | 16d | 2012-01-24 | 2012-02-14 | 5 | Alex |
| 9 | 2.5 | Design Critics |  | 12d | 2012-02-10 | 2012-02-27 | 7 | Max |
| 10 | 2.6 | Design Selector |  | 12d | 2012-02-15 | 2012-03-01 | 8 | Alex |
| 11 | 2.7 | Design Way2Think |  | 12d | 2012-02-28 | 2012-03-14 | 9 | Max |
| 12 | 3 | Analysis and design | milestone | 0d | 2012-03-15 | 2012-03-15 | 1, 4 | Alex |
| 13 | 4 | **OpenCog prototype** |  | 31d | 2012-01-31 | 2012-03-13 | 1 |  |
| 14 | 4.1 | **CogBuntu** |  | 3d | 2012-01-31 | 2012-02-02 |  |  |
| 15 | 4.1.1 | Red documentation |  | 1d | 2012-01-31 | 2012-01-31 |  | Renat; Alex; Artem; Adel; Bulat |
| 16 | 4.1.2 | Install CogBuntu |  | 2d | 2012-02-01 | 2012-02-02 | 15 | Renat; Alex; Artem; Adel; Bulat |
| 17 | 4.2 | **AtomSpace Analysis** |  | 22d | 2012-02-03 | 2012-03-05 | 14 | Artem |
| 18 | 4.2.1 | Read documentation |  | 2d | 2012-02-03 | 2012-02-06 |  | Artem |
| 19 | 4.2.2 | Test storage using Cookbook |  | 4d | 2012-02-07 | 2012-02-10 | 18 |  |
| 20 | 4.2.3 | Test storage usability for knowledge representation |  | 16d | 2012-02-13 | 2012-03-05 | 19 |  |
| 21 | 4.3 | **Probability Logic Engines analysis** |  | 22d | 2012-02-03 | 2012-03-05 | 14 | Renat |
| 22 | 4.3.1 | **PLN analysis** |  | 6d | 2012-02-03 | 2012-02-10 |  |  |
| 23 | 4.3.1.1 | Read documentation |  | 2d | 2012-02-03 | 2012-02-06 |  |  |
| 24 | 4.3.1.2 | Test PLN using NARS data |  | 4d | 2012-02-07 | 2012-02-10 | 23 |  |
| 25 | 4.3.2 | Bayesian inference |  | 16d | 2012-02-13 | 2012-03-05 | 24 |  |

| ID | WBS | Task | Type | Duration | Start | Finish | Predecessors | Resources |
| --- | --- | --- | --- | --- | --- | --- | --- | --- |
| 26 | 4.4 | **Embodiment** |  | 28d | 2012-02-03 | 2012-03-13 | 1, 14 | Adel |
| 27 | 4.4.1 | Read documentation |  | 8d | 2012-02-03 | 2012-02-14 |  |  |
| 28 | 4.4.2 | Test embodiment system to simulate Intellix |  | 20d | 2012-02-15 | 2012-03-13 | 27 |  |
| 29 | 4.5 | **Natural language processors** |  | 18d | 2012-02-03 | 2012-02-28 | 14 | Bulat |
| 30 | 4.5.1 | RelEx |  | 8d | 2012-02-03 | 2012-02-14 |  |  |
| 31 | 4.5.2 | Stanford Parser |  | 4d | 2012-02-15 | 2012-02-20 | 30 |  |
| 32 | 4.5.3 | OpenNLP |  | 6d | 2012-02-21 | 2012-02-28 | 31 |  |
| 33 | 5 | OpenCog analysis | milestone | 0d | 2012-03-14 | 2012-03-14 | 13 |  |
| 34 | 6 | **System Training prototype** |  | 60d | 2012-02-29 | 2012-05-22 | 14 |  |
| 35 | 6.1 | MOSES |  | 18d | 2012-02-29 | 2012-03-23 | 29 | Bulat |
| 36 | 6.2 | Bayesian network |  | 16d | 2012-03-06 | 2012-03-27 | 17 | Artem |
| 37 | 6.3 | **Training** |  | 19d | 2012-03-02 | 2012-03-28 |  |  |
| 38 | 6.3.1 | **Training data structures** |  | 19d | 2012-03-02 | 2012-03-28 |  |  |
| 39 | 6.3.1.1 | Incident description |  | 1d | 2012-03-02 | 2012-03-02 | 10 | Alex |
| 40 | 6.3.1.2 | Incident category |  | 1d | 2012-03-05 | 2012-03-05 | 39 | Alex |
| 41 | 6.3.1.3 | **Incident formalized description** |  | 10d | 2012-03-15 | 2012-03-28 | 11 | Max |
| 42 | 6.3.1.3.1 | Model |  | 10d | 2012-03-15 | 2012-03-28 | 11 | Max |
| 43 | 6.3.1.4 | Incident solution(Migrate HowTo approach |  | 10d | 2012-03-06 | 2012-03-19 | 40 | Alex |
| 44 | 6.4 | **Create formalized description generalisation mechanism** |  | 38d | 2012-03-06 | 2012-04-26 |  |  |
| 45 | 6.4.1 | **Create common parts selector and variable introducer** |  | 38d | 2012-03-06 | 2012-04-26 |  |  |
| 46 | 6.4.1.1 | Comparator |  | 6d | 2012-03-06 | 2012-03-13 | 21 | Renat |
| 47 | 6.4.1.2 | Recursive runner |  | 8d | 2012-03-14 | 2012-03-23 | 46 | Renat |
| 48 | 6.4.1.3 | **Variable introducer** |  | 21d | 2012-03-29 | 2012-04-26 |  |  |
| 49 | 6.4.1.3.1 | Design variable structure |  | 4d | 2012-03-29 | 2012-04-03 | 42 | Max |
| 50 | 6.4.1.3.2 | Implement and test variable |  | 8d | 2012-04-04 | 2012-04-13 | 49 | Max |
| 51 | 6.4.1.3.3 | Named variables builder |  | 8d | 2012-04-16 | 2012-04-25 | 50 | Max |
| 52 | 6.4.1.3.4 | Unnamed variables builder |  | 8d | 2012-04-17 | 2012-04-26 | 63 | Adel |

| ID | WBS | Task | Type | Duration | Start | Finish | Predecessors | Resources |
| --- | --- | --- | --- | --- | --- | --- | --- | --- |
| 53 | 6.5 | **Incident classification algorithm** |  | 16d | 2012-03-14 | 2012-04-04 |  |  |
| 54 | 6.5.1 | **Create test data for KnowledgeBaseAnnotator** |  | 16d | 2012-03-14 | 2012-04-04 |  |  |
| 55 | 6.5.1.1 | Allowed Software list |  | 6d | 2012-03-14 | 2012-03-21 | 26 | Adel |
| 56 | 6.5.1.2 | Over software actions |  | 4d | 2012-03-26 | 2012-03-29 | 35 | Bulat |
| 57 | 6.5.1.3 | Software attributes |  | 8d | 2012-03-26 | 2012-04-04 | 47 | Renat |
| 58 | 6.5.1.4 | Software states |  | 4d | 2012-03-20 | 2012-03-23 | 43 | Alex |
| 59 | 6.6 | **Create validation criteria inference approach** |  | 46d | 2012-03-20 | 2012-05-22 |  |  |
| 60 | 6.6.1 | Analyse validation criteria types |  | 10d | 2012-03-22 | 2012-04-04 | 55 | Adel |
| 61 | 6.6.2 | Create descriptions via predicates (logical operations) |  | 14d | 2012-03-20 | 2012-04-06 | 43 | Alex; Artem |
| 62 | 6.6.3 | **Create validation mechanism possibly via PLN** |  | 12d | 2012-03-30 | 2012-04-16 |  |  |
| 63 | 6.6.3.1 | Design adapter |  | 8d | 2012-04-05 | 2012-04-16 | 60 | Adel |
| 64 | 6.6.3.2 | Implement adapter |  | 12d | 2012-03-30 | 2012-04-16 | 56 | Renat; Bulat |
| 65 | 6.6.4 | **Create Solution generation prototype** |  | 32d | 2012-04-09 | 2012-05-22 |  |  |
| 66 | 6.6.4.1 | HowTo types = 16 - 40 |  | 16d | 2012-04-09 | 2012-04-30 | 61 | Alex |
| 67 | 6.6.4.2 | Solution description language = 32 - 40 |  | 32d | 2012-04-09 | 2012-05-22 | 61 | Artem |
| 68 | 6.6.4.3 | Create 10 Solution descriptions = 16 - 32 |  | 16d | 2012-04-17 | 2012-05-08 | 64 | Bulat |
| 69 | 6.6.4.4 | **Train Solutions** |  | 23d | 2012-04-17 | 2012-05-17 |  |  |
| 70 | 6.6.4.4.1 | Analyse machine learning algorithms (C 4.5, Bayes network) = 16 - 24 |  | 16d | 2012-04-17 | 2012-05-08 | 64 | Renat |
| 71 | 6.6.4.4.2 | Train 10 Solutions (in: formalised problem description, out Solution) = 16 - 24 |  | 16d | 2012-04-26 | 2012-05-17 | 51 | Max |
| 72 | 7 | Training prototype milestone | milestone | 0d | 2012-05-23 | 2012-05-23 | 34 |  |
| 73 | 8 | **AIV Solution, for the specification see page.** |  | 36d | 2012-05-24 | 2012-07-12 | 72 |  |
| 74 | 8.1 | **Auto-correct analysis should use measures: precision, recall and F-measure** |  | 6d | 2012-06-29 | 2012-07-06 |  |  |
| 75 | 8.1.1 | **AbiWord** |  | 6d | 2012-05-24 | 2012-05-31 |  |  |
| 76 | 8.1.1.1 | Read Syntax check module documentation = 1 |  | 1d | 2012-05-24 | 2012-05-24 |  | Max |
| 77 | 8.1.1.2 | Install AbiWord = 1 - 2 |  | 1d | 2012-05-25 | 2012-05-25 | 76 | Max |
| 78 | 8.1.1.3 | Test 10 incidents descriptions = 3.5 - 4 |  | 4d | 2012-05-28 | 2012-05-31 | 77 | Max |

| ID | WBS | Task | Duration | Start | Finish | Predecessors | Resources |
| --- | --- | --- | --- | --- | --- | --- | --- |
| 79 | 8.1.2 | **OpenOffice(LibreOffice)** | 6d | 2012-05-24 | 2012-05-31 |  |  |
| 80 | 8.1.2.1 | Read Auto-correct module documentation OpenOffice LibreOffice = 1 | 1d | 2012-05-24 | 2012-05-24 |  | Alex |
| 81 | 8.1.2.2 | Install OpenOffice or LibreOffice = 1 - 2 | 1d | 2012-05-25 | 2012-05-25 | 80 | Alex |
| 82 | 8.1.2.3 | Test 10 incidents descriptions = 3.5 - 4 | 4d | 2012-05-28 | 2012-05-31 | 81 | Alex |
| 83 | 8.1.3 | **OpenCog** | 6d | 2012-05-24 | 2012-05-31 |  |  |
| 84 | 8.1.3.1 | Read Auto-correct module documentation Grammatical correction = 1 - 2 | 1d | 2012-05-24 | 2012-05-24 |  | Adel |
| 85 | 8.1.3.2 | Install OpenCog = 1 - 2 | 1d | 2012-05-25 | 2012-05-25 | 84 | Adel |
| 86 | 8.1.3.3 | Test 10 incidents descriptions = 3.5 - 4 | 4d | 2012-05-28 | 2012-05-31 | 85 | Adel |
| 87 | 8.1.4 | **KOffice** | 6d | 2012-05-24 | 2012-05-31 |  |  |
| 88 | 8.1.4.1 | Read Auto-correct module documentation = 1 - 2 | 1d | 2012-05-24 | 2012-05-24 |  | Bulat |
| 89 | 8.1.4.2 | Install KOffice = 1 - 4 [Could be not strait forward under Win] | 1d | 2012-05-25 | 2012-05-25 | 88 | Bulat |
| 90 | 8.1.4.3 | Test 10 incidents descriptions = 3.5 - 4 | 4d | 2012-05-28 | 2012-05-31 | 89 | Bulat |
| 91 | 8.2 | **KnowledgeBaseAnnotator, see specification. knowledge base integration analysis.** | 36d | 2012-05-24 | 2012-07-12 |  |  |
| 92 | 8.2.1 | **WolframAlpha** | 30d | 2012-05-24 | 2012-07-04 |  |  |
| 93 | 8.2.1.1 | Explore API to integrate = 10 - 20 [could be not strait forward] | 10d | 2012-05-24 | 2012-06-06 |  | Renat |
| 94 | 8.2.1.2 | Test information retrieval and annotation options = 20 - 30 [could contain information not from SE domain] | 20d | 2012-06-07 | 2012-07-04 | 93 | Renat |
| 95 | 8.2.2 | **TrueKnowledge** | 30d | 2012-05-24 | 2012-07-04 |  |  |
| 96 | 8.2.2.1 | Explore API to integrate = 10 - 20 [could be not strait forward] | 10d | 2012-05-24 | 2012-06-06 |  | Artem |
| 97 | 8.2.2.2 | Test information retrieval and annotation options = 20 - 30 [could contain information not from SE domain] | 20d | 2012-06-07 | 2012-07-04 | 96 | Artem |
| 98 | 8.2.3 | **ConceptNet** | 30d | 2012-06-01 | 2012-07-12 |  |  |
| 99 | 8.2.3.1 | Explore API to integrate = 10 - 20 [could be not strait forward] | 10d | 2012-06-01 | 2012-06-14 | 78 | Max |
| 100 | 8.2.3.2 | Test information retrieval and annotation options = 20 - 30 [could contain information not from SE domain] | 20d | 2012-06-15 | 2012-07-12 | 99 | Max |
| 101 | 8.2.4 | **ConceptNet5** | 30d | 2012-06-01 | 2012-07-12 |  |  |
| 102 | 8.2.4.1 | Explore API to integrate = 10 - 20 [could be not strait forward] | 10d | 2012-06-01 | 2012-06-14 | 82 | Alex |
| 103 | 8.2.4.2 | Test information retrieval and annotation options = 20 - 30 [could contain information not from SE domain] | 20d | 2012-06-15 | 2012-07-12 | 102 | Alex |

| ID | WBS | Task | Type | Duration | Start | Finish | Predecessors | Resources |
| --- | --- | --- | --- | --- | --- | --- | --- | --- |
| 104 | 8.2.5 | **WordNet, is integrated in ConceptNet5 but could be useful standalone** |  | 30d | 2012-06-01 | 2012-07-12 |  |  |
| 105 | 8.2.5.1 | Explore API to integrate = 10 - 20 [could be not strait forward] |  | 10d | 2012-06-01 | 2012-06-14 | 86 | Adel |
| 106 | 8.2.5.2 | Test information retrieval and annotation options = 20 - 30 [could contain information not from SE domain] |  | 20d | 2012-06-15 | 2012-07-12 | 105 |  |
| 107 | 9 | AIV Solution | milestone | 0d | 2012-07-13 | 2012-07-13 | 73 |  |
| 108 | 10 | **Emotion Machine Soltion** |  | 36d | 2012-07-17 | 2012-09-04 | 107 |  |
| 109 | 10.1 | **Prototype Critics, Way2Think, Selector** |  | 14d | 2012-07-17 | 2012-08-03 |  |  |
| 110 | 10.1.1 | **Implement Critics** |  | 14d | 2012-07-17 | 2012-08-03 |  |  |
| 111 | 10.1.1.1 | **Deliberative Critics** |  | 8d | 2012-07-17 | 2012-07-26 |  |  |
| 112 | 10.1.1.1.1 | Current activity goal representation = 6 - 8 [possibly should try several approaches] |  | 6d | 2012-07-17 | 2012-07-24 |  | Max |
| 113 | 10.1.1.1.2 | Current task state representation = 4 - 6 [possibly should try several representations] |  | 4d | 2012-07-17 | 2012-07-20 |  | Alex |
| 114 | 10.1.1.1.3 | Reasoning over current state with Reasoner adapter development = 8 - 10 |  | 8d | 2012-07-17 | 2012-07-26 |  | Adel |
| 115 | 10.1.1.2 | **Reflective Critic** |  | 6d | 2012-07-17 | 2012-07-24 |  |  |
| 116 | 10.1.1.2.1 | **Develop Energy control mechanism.** |  | 6d | 2012-07-17 | 2012-07-24 |  |  |
| 117 | 10.1.1.2.1.1 | Design Energy concept = 4 |  | 4d | 2012-07-17 | 2012-07-20 |  | Artem |
| 118 | 10.1.1.2.1.2 | Design Energy assignment mechanism during training = 2 |  | 2d | 2012-07-17 | 2012-07-18 |  | Bulat |
| 119 | 10.1.1.2.1.3 | Implement Energy concept = 2 |  | 2d | 2012-07-23 | 2012-07-24 | 117 | Renat |
| 120 | 10.1.1.2.1.4 | Implement Energy assignment mechanism = 4 |  | 4d | 2012-07-19 | 2012-07-24 | 118 | Bulat |
| 121 | 10.1.1.3 | **Develop Sub-goal control mechanism.** |  | 8d | 2012-07-23 | 2012-08-01 |  |  |
| 122 | 10.1.1.3.1 | Design sub-goal control mechanism = 4 |  | 4d | 2012-07-23 | 2012-07-26 | 113 | Alex |
| 123 | 10.1.1.3.2 | Implement sub-goal control mechanism = 4 |  | 4d | 2012-07-27 | 2012-08-01 | 122 | Alex |
| 124 | 10.1.1.4 | **Develop Evidence control mechanism.** |  | 8d | 2012-07-25 | 2012-08-03 |  |  |
| 125 | 10.1.1.4.1 | Design Evidence control mechanism = 4 - 10 [no clear understanding of evidence control mechanism, possibly further research required] |  | 4d | 2012-07-25 | 2012-07-30 | 112 | Max |
| 126 | 10.1.1.4.2 | Implement Evidence control mechanism = 4 - 10 |  | 4d | 2012-07-31 | 2012-08-03 | 125 | Max |
| 127 | 10.2 | Prototype Selector = 6 - 8 |  | 6d | 2012-07-23 | 2012-07-30 | 117 | Artem |

| ID | WBS | Task | Type | Duration | Start | Finish | Predecessors | Resources |
| --- | --- | --- | --- | --- | --- | --- | --- | --- |
| 128 | 10.3 | **Prototype Way2Think** |  | 30d | 2012-07-25 | 2012-09-04 |  |  |
| 129 | 10.3.1 | Create base constructs(HowTo-s) = 2 - 4 |  | 2d | 2012-07-25 | 2012-07-26 | 119 | Renat |
| 130 | 10.3.2 | Knowing How (select from KB) = 4 - 8 |  | 4d | 2012-07-25 | 2012-07-30 | 120 | Bulat |
| 131 | 10.3.3 | Extensive Search (search in KB) = 12 - 24 [graph search could be not strait-forward] |  | 12d | 2012-07-27 | 2012-08-13 | 129 | Renat |
| 132 | 10.3.4 | Reasoning by Analogy = 32 - 40 [graph analogy API could be not strait forward] |  | 11d | 2012-07-31 | 2012-08-14 | 114, 127 | Alex; Artem; Adel |
| 133 | 10.3.5 | **Divide and Conquer** |  | 24d | 2012-07-31 | 2012-08-31 |  |  |
| 134 | 10.3.5.1 | **Add analytical HowTo-s to basic set:** |  | 8d | 2012-07-31 | 2012-08-09 |  |  |
| 135 | 10.3.5.1.1 | Wrong software was installed = 4 |  | 4d | 2012-08-06 | 2012-08-09 | 126 | Max |
| 136 | 10.3.5.1.2 | Two direct instructions in one incident description = 4 |  | 4d | 2012-07-31 | 2012-08-03 | 130 | Bulat |
| 137 | 10.3.5.2 | **Add Interpretation mechanism over current state of the system** |  | 20d | 2012-08-06 | 2012-08-31 |  |  |
| 138 | 10.3.5.2.1 | Variable and current state addressing = 12 - 16 |  | 12d | 2012-08-06 | 2012-08-21 | 136 | Bulat |
| 139 | 10.3.5.2.2 | Logical operation execution = 16 |  | 16d | 2012-08-10 | 2012-08-31 | 135 | Max |
| 140 | 10.3.6 | **Simulation (build the model based on inbound information) =** |  | 16d | 2012-08-14 | 2012-09-04 |  |  |
| 141 | 10.3.6.1 | Search for concept in the KB. = 16 |  | 16d | 2012-08-14 | 2012-09-04 | 131 | Renat |
| 142 | 10.3.6.2 | Search for properties in KB. = 4 |  | 4d | 2012-08-15 | 2012-08-20 | 132 | Artem |
| 143 | 10.3.6.3 | Create connections of found concepts. = 2 |  | 2d | 2012-08-15 | 2012-08-16 | 132 | Alex |
| 144 | 10.3.6.4 | Support context. = 2 |  | 2d | 2012-08-22 | 2012-08-23 | 138 | Bulat |
| 145 | 10.4 | **Test main perceiving workflow** |  | 5d | 2012-08-24 | 2012-08-30 |  |  |
| 146 | 10.4.1 | Prototype Main Workflow. = 10 - 14 [some not well tested bugs could slow down the development]{Models, Critics, Way2Think ready to use} |  | 5d | 2012-08-24 | 2012-08-30 | 143, 144 | Alex; Bulat |
| 147 | 11 | Emotion machine solution | milestone | 0d | 2012-09-05 | 2012-09-05 | 108 |  |
